# Patch Improvement Plan v3

Schedule from MS Project, 2017-04-03 to 2018-05-31, A marks actual dates.
Deloitte.

## Calendars

- Standard: Mon-Fri 08:00-12:00, 13:00-17:00; Sat-Sun off.

## Resources

| Resource |
| --- |
| Steve Hardison |
| David Bruem |
| Amanda Butlett |
| Andrew Baker |
| Benjamin Withers |
| Samuel Erskine |
| Karthik Varanasi |
| Bharath Suthapalli |
| GISO |
| CTO |
| CDN MF |
| Pradeep Sana |
| Bibek Pattnaik |
| Catherine Mannino |

## Schedule

| ID | WBS | Task | Type | Duration | Start | Finish | Predecessors | Complete | Constraint | Resources | Work | Actual work |
| --- | --- | --- | --- | --- | --- | --- | --- | --- | --- | --- | --- | --- |
| 1 | 1 | Patch SIP Start | milestone, manual | 0d | 2017-04-03 A | 2017-04-03 A |  | 100% |  |  |  |  |
| 2 | 2 | **Operational Efficiency** |  | 64d | 2017-04-04 A | 2017-06-30 A |  | 100% |  |  | 1368h | 1368h |
| 3 | 2.1 | **Onboarding Improvements** |  | 10d | 2017-04-24 A | 2017-05-05 A |  | 100% |  |  | 160h | 160h |
| 4 | 2.1.1 | Approach Defined |  | 4d | 2017-04-24 A | 2017-04-27 A | 1 | 100% | start no earlier than 2017-04-24 | Andrew Baker; David Bruem; Samuel Erskine | 96h | 96h |
| 5 | 2.1.2 | Approach Agreement |  | 2d | 2017-04-28 A | 2017-05-01 A | 4 | 100% |  | Andrew Baker; David Bruem | 32h | 32h |
| 6 | 2.1.3 | Incorporated into Onboarding Process |  | 4d | 2017-05-02 A | 2017-05-05 A | 5 | 100% |  | Bibek Pattnaik | 32h | 32h |
| 7 | 2.2 | **Monthly Maintenance Schedule** |  | 5d | 2017-05-01 A | 2017-05-05 A |  | 100% |  |  | 80h | 80h |
| 8 | 2.2.1 | Include into STS Service Web Site Calendar | manual | 5d | 2017-05-01 A | 2017-05-05 A |  | 100% |  | Amanda Butlett | 40h | 40h |
| 9 | 2.2.2 | Communication to MF | manual | 5d | 2017-05-01 A | 2017-05-05 A | 8SS | 100% |  | Amanda Butlett | 40h | 40h |
| 10 | 2.3 | **SCCM Monitoring & Alerting** |  | 29d | 2017-04-21 A | 2017-05-31 A |  | 100% |  |  | 464h | 464h |
| 11 | 2.3.1 | Identify Roles & Responsibilities | manual | 1d | 2017-04-21 A | 2017-04-21 A |  | 100% |  | Amanda Butlett; Andrew Baker | 16h | 16h |
| 12 | 2.3.2 | SCOM Platform Development | manual | 6d | 2017-04-28 A | 2017-05-05 A | 11 | 100% |  | Samuel Erskine | 48h | 48h |
| 13 | 2.3.3 | Dashboard Alerting | manual | 6d | 2017-04-28 A | 2017-05-05 A | 12SS | 100% |  | Samuel Erskine | 48h | 48h |
| 14 | 2.3.4 | Establish Monitoring Schedule - Tier 2 Teams | manual | 15d | 2017-04-24 A | 2017-05-12 A | 11 | 100% |  | Amanda Butlett | 120h | 120h |
| 15 | 2.3.5 | Create Alerting/Incident Event Documentation | manual | 20d | 2017-04-24 A | 2017-05-19 A | 14SS | 100% |  | Amanda Butlett | 160h | 160h |
| 16 | 2.3.6 | Train Tier 2 Team |  | 9d | 2017-05-22 A | 2017-05-31 A | 15 | 100% |  | Amanda Butlett | 72h | 72h |
| 17 | 2.3.7 | Monitoring & Alerting Live | milestone | 0d | 2017-05-31 A | 2017-05-31 A | 16 | 100% |  | Andrew Baker; David Bruem |  |  |
| 18 | 2.4 | **Ticket Management** |  | 50d | 2017-04-24 A | 2017-06-30 A |  | 100% |  |  | 640h | 640h |
| 19 | 2.4.1 | Create Recommendation - Support Capacity /Hours | manual | 5d | 2017-04-24 A | 2017-04-28 A | 1 | 100% |  | Andrew Baker; David Bruem | 80h | 80h |
| 20 | 2.4.2 | Review & Receive approval - Quintin | milestone | 0d | 2017-04-28 A | 2017-04-28 A | 19 | 100% |  | Andrew Baker; David Bruem |  |  |
| 21 | 2.4.3 | Establish Shift Schedule - Tier 2 Teams |  | 46d | 2017-05-01 A | 2017-06-30 A | 20 | 100% |  | Amanda Butlett | 368h | 368h |
| 22 | 2.4.4 | Create Alerting/Incident Event Documentation |  | 20d | 2017-05-01 A | 2017-05-26 A | 21SS | 100% |  | Amanda Butlett | 160h | 160h |
| 23 | 2.4.5 | Train Tier 2 Team |  | 4d | 2017-05-26 A | 2017-05-30 A | 22 | 100% |  | Amanda Butlett | 32h | 32h |
| 24 | 2.4.6 | Ticket Management Process Live | milestone | 0d | 2017-05-31 A | 2017-05-31 A | 23 | 100% |  | Andrew Baker; David Bruem |  |  |

| ID | WBS | Task | Type | Duration | Start | Finish | Predecessors | Complete | Remaining | Total slack | Free slack | Constraint | Resources | Work | Actual work |
| --- | --- | --- | --- | --- | --- | --- | --- | --- | --- | --- | --- | --- | --- | --- | --- |
| 25 | 2.5 | **Infrastructure Upgrades** |  | 39d | 2017-04-04 A | 2017-05-26 A |  | 100% |  |  |  |  |  | 24h | 24h |
| 26 | 2.5.1 | SCCM Memory upgrades (CAS & Primary Sites) |  | 1d | 2017-04-04 A | 2017-04-04 A |  | 100% |  |  |  | start no earlier than 2017-04-01 | Amanda Butlett | 8h | 8h |
| 27 | 2.5.2 | SQL Upgrade (Enterprise) |  | 0.5d | 2017-04-28 A | 2017-04-28 A | 26 | 100% |  |  |  | start no earlier than 2017-04-28 | Amanda Butlett | 4h | 4h |
| 28 | 2.5.3 | SCCM Version Upgrade - 1702 |  | 0.5d | 2017-04-28 A | 2017-04-28 A | 27 | 100% |  |  |  |  | Amanda Butlett | 4h | 4h |
| 29 | 2.5.4 | Flash Upgrades | manual | 1d | 2017-05-26 A | 2017-05-26 A | 28 | 100% |  |  |  |  | Amanda Butlett | 8h | 8h |
| 30 | 3 | **Service Improvements** |  | 294d? | 2017-04-17 A | 2018-05-31 |  | 14% | 253.45d? | 0d |  |  |  | 3216h | 1136h |
| 31 | 3.1 | **Quality** |  | 294d? | 2017-04-17 A | 2018-05-31 |  | 25% | 221.41d? | 0d |  |  |  | 2128h | 1008h |
| 32 | 3.1.1 | **SCCM Collection Optimization– Collection Rationalization/ Reduction** |  | 112d | 2017-04-17 A | 2017-09-19 |  | 56% | 49.66d | 182d |  |  |  | 1216h | 840h |
| 33 | 3.1.1.1 | Gather SCCM Collection |  | 5d | 2017-04-17 A | 2017-04-21 A |  | 100% |  |  |  | start no earlier than 2017-04-17 | Karthik Varanasi | 40h | 40h |
| 34 | 3.1.1.2 | Audit collections by member firms |  | 25d | 2017-04-24 A | 2017-05-26 A | 33 | 100% |  |  |  |  | Amanda Butlett; Karthik Varanasi | 400h | 400h |
| 35 | 3.1.1.3 | Develop member firm collection (reduce incremental updates) |  | 21d | 2017-05-27 A | 2017-06-23 A | 34 | 100% |  |  |  |  | Amanda Butlett; Karthik Varanasi | 336h | 336h |
| 36 | 3.1.1.4 | Deploy updates (reduce incremental updates) |  | 1d | 2017-06-23 A | 2017-06-23 A |  | 100% |  |  |  | start no earlier than 2017-06-23 | Benjamin Withers | 8h | 8h |
| 37 | 3.1.1.5 | Communicate with member firms on updates |  | 1d | 2017-06-26 A | 2017-06-26 A | 36 | 100% |  |  |  |  | Benjamin Withers | 8h | 8h |
| 38 | 3.1.1.6 | Perform Review Collections with NL MF and develop best practice/guidance |  | 12d | 2017-07-05 A | 2017-07-20 | 37FS+6d | 50% | 6d | 5d | 0d |  | Benjamin Withers | 96h | 48h |
| 39 | 3.1.1.7 | Develop list of member firms to target in prioritized order |  | 1d | 2017-07-21 | 2017-07-21 | 38 |  |  | 5d | 0d |  | Benjamin Withers | 8h |  |
| 40 | 3.1.1.8 | Perform collection rationalization for top 5 offending firms and provide training |  | 20d | 2017-07-24 | 2017-08-18 | 39 |  |  | 5d | 0d |  | Benjamin Withers | 160h |  |
| 41 | 3.1.1.9 | Perform collection rationalization for the remaining firms and provide training |  | 20d | 2017-08-23 | 2017-09-19 | 40FS+2d |  |  | 5d | 0d |  | Benjamin Withers | 160h |  |
| 42 | 3.1.1.10 | Collection Optimization Complete | milestone | 0d | 2017-09-19 | 2017-09-19 | 41 |  |  | 5d |  |  |  |  |  |
| 43 | 3.1.2 | **Role Based Security** |  | 37d | 2017-06-26 A | 2017-08-15 |  | 28% | 26.72d | 207d |  |  |  | 288h | 80h |
| 44 | 3.1.2.1 | Define roles and associated rights |  | 5d | 2017-06-26 A | 2017-06-30 A | 78SS | 100% |  |  |  |  | Steve Hardison | 40h | 40h |
| 45 | 3.1.2.2 | Review scopes and make any necessary changes |  | 10d | 2017-07-03 A | 2017-07-14 | 44 | 50% | 5d | 30d | 0d |  | Steve Hardison | 80h | 40h |
| 46 | 3.1.2.3 | Configure AD groups |  | 10d | 2017-07-17 | 2017-07-28 | 45 |  |  | 30d | 0d |  | Steve Hardison | 80h |  |
| 47 | 3.1.2.4 | Confirm individual roles and privilege with MF |  | 10d | 2017-08-01 | 2017-08-14 | 46FS+1d |  |  | 30d | 0d |  | Steve Hardison | 80h |  |
| 48 | 3.1.2.5 | Implement new security model |  | 1d | 2017-08-15 | 2017-08-15 | 47 |  |  | 30d |  |  | Steve Hardison | 8h |  |

| ID | WBS | Task | Duration | Start | Finish | Predecessors | Complete | Remaining | Total slack | Free slack | Constraint | Resources | Work | Actual work |
| --- | --- | --- | --- | --- | --- | --- | --- | --- | --- | --- | --- | --- | --- | --- |
| 49 | 3.1.3 | **Improve monitoring and alerting** | 15d | 2017-07-18 | 2017-08-07 |  |  |  | 213d |  |  |  | 120h |  |
| 50 | 3.1.3.1 | Review the current status with MFs | 5d | 2017-07-18 | 2017-07-24 |  |  |  | 36d | 0d | start no earlier than 2017-07-18 | Amanda Butlett | 40h |  |
| 51 | 3.1.3.2 | Determine the move forward plan and set timelines | 10d | 2017-07-25 | 2017-08-07 | 50 |  |  | 36d |  |  | Amanda Butlett | 80h |  |
| 52 | 3.1.4 | **Patch Exemption Process** | 44d? | 2017-07-03 A | 2017-08-31 |  | 10% | 39.47d? | 195d |  |  |  | 264h | 28h |
| 53 | 3.1.4.1 | Process defined | 1d? | 2017-07-03 A | 2017-07-03 A |  | 100% |  |  |  | start no earlier than 2017-07-03 | Amanda Butlett | 8h | 8h |
| 54 | 3.1.4.2 | Workflow defined | 10d | 2017-07-04 A | 2017-07-17 | 53 | 25% | 7.5d | 18d | 0d |  | Amanda Butlett | 80h | 20h |
| 55 | 3.1.4.3 | Draft communication for MF | 4d | 2017-07-18 | 2017-07-21 | 54 |  |  | 18d | 0d |  | Amanda Butlett | 32h |  |
| 56 | 3.1.4.4 | Communicate Patch Exemption Process to MF | 1d | 2017-07-24 | 2017-07-24 | 55 |  |  | 18d | 0d |  | Amanda Butlett | 8h |  |
| 57 | 3.1.4.5 | Submit request to SN for form creation | 1d? | 2017-08-08 | 2017-08-08 | 56FS+10d |  |  | 18d | 0d |  |  |  |  |
| 58 | 3.1.4.6 | Develop form in SN | 15d | 2017-08-09 | 2017-08-29 | 57 |  |  | 18d | 0d |  | Amanda Butlett | 120h |  |
| 59 | 3.1.4.7 | Test | 1d? | 2017-08-30 | 2017-08-30 | 58 |  |  | 18d | 0d |  | Amanda Butlett | 8h |  |
| 60 | 3.1.4.8 | Communicate MF | 1d? | 2017-08-31 | 2017-08-31 | 59 |  |  | 18d |  |  | Amanda Butlett | 8h |  |
| 61 | 3.1.5 | **Patch Emergency Process** | 15d | 2017-07-03 A | 2017-07-21 |  | 25% | 11.25d | 224d |  |  |  | 240h | 60h |
| 62 | 3.1.5.1 | Process defined | 15d | 2017-07-03 A | 2017-07-21 | 53SS | 25% | 11.25d | 47d | 0d |  | Amanda Butlett | 120h | 30h |
| 63 | 3.1.5.2 | Create draft communications | 15d | 2017-07-03 A | 2017-07-21 | 62SS | 25% | 11.25d | 47d |  |  | Amanda Butlett | 120h | 30h |
| 64 | 3.1.6 | **3rd Party Patch Deployments (Q3 or 4)** | 103d | 2018-01-09 | 2018-05-31 |  |  |  | 0d |  |  |  |  |  |
| 65 | 3.1.6.1 | Establish process and capability for the patching of Common 3rd party patching (e.g. Java) | 103d | 2018-01-09 | 2018-05-31 |  |  |  | 0d |  | start no earlier than 2018-01-09 |  |  |  |
| 66 | 3.2 | **Performance** | 112d | 2017-04-24 A | 2017-09-26 |  | 7% | 104.7d | 177d |  |  |  | 264h | 128h |
| 67 | 3.2.1 | **Client Health Plan** | 60d | 2017-07-05 A | 2017-09-26 | 1 | 2% | 59.06d | 177d |  |  |  |  |  |
| 68 | 3.2.1.1 | Upgrade all Clients below current branch (2012 and 2012 R2) | 44d | 2017-07-05 | 2017-09-04 |  |  |  | 4.4d | 0d | start no earlier than 2017-07-05 |  |  |  |
| 69 | 3.2.1.2 | Install client on all clients with no agents | 44d | 2017-07-05 | 2017-09-04 | 68SS |  |  | 16d |  |  |  |  |  |
| 70 | 3.2.1.3 | Upgrade Current Branch (1511, 1602, 1606 and 1610) clients to 1702 | 44d | 2017-07-05 | 2017-09-04 | 68SS |  |  | 16d |  |  |  |  |  |
| 71 | 3.2.1.4 | Post patching and before the each patch cycle | 44d | 2017-07-05 A | 2017-09-04 | 68SS | 10% | 39.6d | 16d |  |  |  |  |  |
| 72 | 3.2.1.5 | Review and update all installation locations and parameters | 44d | 2017-07-05 | 2017-09-04 | 68SS |  |  | 16d |  |  |  |  |  |
| 73 | 3.2.1.6 | Report and monitor | 60d | 2017-07-05 | 2017-09-26 | 68SS |  |  | 177d |  |  |  |  |  |

Notes:
- 50: Transition SCCM monitoring to the STS UPM Service to provide best-in-class proactive and reactive monitoring and alerting on for service related events (31 MAY)
- 64: work with US
- 68: Reaching out and working with Member firms starting next week and plan to have this completed by end of August.
- 69: Install client on all clients with no agents. - Reaching out and working with Member firms starting next week and plan to have this completed by end of August.
- 70: Reaching out and working with Member firms starting next week and plan to have this completed by end of August.
- 71: Dates to be provide next week
- 72: Dates to be provide next week
- 73: Working progress and more to come next week

| ID | WBS | Task | Type | Duration | Start | Finish | Predecessors | Complete | Remaining | Total slack | Free slack | Constraint | Resources | Work | Actual work |
| --- | --- | --- | --- | --- | --- | --- | --- | --- | --- | --- | --- | --- | --- | --- | --- |
| 74 | 3.2.2 | **Patch cycle automation** |  | 6d | 2017-07-24 | 2017-07-31 |  |  |  | 218d |  |  |  | 48h |  |
| 75 | 3.2.2.1 | Determine the activities and timing to deliver |  | 6d | 2017-07-24 | 2017-07-31 |  |  |  | 41d |  | start no earlier than 2017-07-24 | Amanda Butlett | 48h |  |
| 76 | 3.2.3 | **SCCM Boundaries** |  | 70d | 2017-04-24 A | 2017-07-28 |  | 59% | 28.52d | 219d |  |  |  | 216h | 128h |
| 77 | 3.2.3.1 | Audit of SCCM Boundaries | manual | 1d | 2017-04-24 A | 2017-04-24 A | 34SS | 100% |  |  |  |  | Steve Hardison | 8h | 8h |
| 78 | 3.2.3.2 | Review Communication Boundaries |  | 15d | 2017-06-26 A | 2017-07-14 A | 77FS+45d | 100% |  |  |  |  | Steve Hardison | 120h | 120h |
| 79 | 3.2.3.3 | Confirm Boundaries with MF |  | 10d | 2017-07-14 | 2017-07-27 | 78FS-1d |  |  | 42d | 0d |  | Steve Hardison | 80h |  |
| 80 | 3.2.3.4 | Implement new Boundary information |  | 1d | 2017-07-28 | 2017-07-28 | 79 |  |  | 42d |  | start no earlier than 2017-05-27 | Steve Hardison | 8h |  |
| 81 | 3.3 | **Communications** |  | 23d | 2017-08-01 | 2017-08-31 |  |  |  | 195d |  |  |  | 552h |  |
| 82 | 3.3.1 | **Update Service Definition (Clarify Approach and Scope) (SIP)** |  | 23d | 2017-08-01 | 2017-08-31 |  |  |  | 195d |  |  |  | 552h |  |
| 83 | 3.3.1.1 | **Internet Facing Distribution Points** |  | 23d | 2017-08-01 | 2017-08-31 |  |  |  | 195d |  |  |  | 184h |  |
| 84 | 3.3.1.1.1 | Document current state approach |  | 6d | 2017-08-01 | 2017-08-08 |  |  |  | 18d | 0d | start no earlier than 2017-08-01 | David Bruem | 48h |  |
| 85 | 3.3.1.1.2 | Secure approval on approach |  | 5d | 2017-08-09 | 2017-08-15 | 84 |  |  | 18d | 0d |  | David Bruem | 40h |  |
| 86 | 3.3.1.1.3 | Add to service definition if necessary |  | 5d | 2017-08-16 | 2017-08-22 | 85 |  |  | 18d | 0d |  | David Bruem | 40h |  |
| 87 | 3.3.1.1.4 | Communicate approach (to whom?) |  | 7d | 2017-08-23 | 2017-08-31 | 86 |  |  | 18d |  |  | David Bruem | 56h |  |
| 88 | 3.3.1.2 | **Operating System Deployment Approach** |  | 23d | 2017-08-01 | 2017-08-31 |  |  |  | 195d |  |  |  | 184h |  |
| 89 | 3.3.1.2.1 | Document current state approach |  | 6d | 2017-08-01 | 2017-08-08 | 84SS |  |  | 18d | 0d |  | David Bruem | 48h |  |
| 90 | 3.3.1.2.2 | Secure approval on approach |  | 5d | 2017-08-09 | 2017-08-15 | 89 |  |  | 18d | 0d |  | David Bruem | 40h |  |
| 91 | 3.3.1.2.3 | Add to roadmap/service definition if necessary |  | 5d | 2017-08-16 | 2017-08-22 | 90 |  |  | 18d | 0d |  | David Bruem | 40h |  |
| 92 | 3.3.1.2.4 | Communicate approach (to whom?) |  | 7d | 2017-08-23 | 2017-08-31 | 91 |  |  | 18d |  |  | David Bruem | 56h |  |
| 93 | 3.3.1.3 | **DMZ Patch Clarification** |  | 23d | 2017-08-01 | 2017-08-31 |  |  |  | 195d |  |  |  | 184h |  |
| 94 | 3.3.1.3.1 | Document current state approach |  | 6d | 2017-08-01 | 2017-08-08 | 84SS |  |  | 18d | 0d |  | David Bruem | 48h |  |
| 95 | 3.3.1.3.2 | Secure approval on approach |  | 5d | 2017-08-09 | 2017-08-15 | 94 |  |  | 18d | 0d |  | David Bruem | 40h |  |
| 96 | 3.3.1.3.3 | Add to roadmap if necessary |  | 5d | 2017-08-16 | 2017-08-22 | 95 |  |  | 18d | 0d |  | David Bruem | 40h |  |
| 97 | 3.3.1.3.4 | Communicate approach (to whom?) |  | 7d | 2017-08-23 | 2017-08-31 | 96 |  |  | 18d |  |  | David Bruem | 56h |  |

Notes:
- 76: System settings for communications at MF level to assit with performance
- 84: Application Distribution + 3rd Party Patching
- 89: Take into consideration possibility of Windows Framework integration and task sequencing
- 94: Define and document best practice approach to patching DMZ - Clarification on how this can/should be done

| ID | WBS | Task | Duration | Start | Finish | Predecessors | Total slack | Free slack | Constraint | Resources | Work |
| --- | --- | --- | --- | --- | --- | --- | --- | --- | --- | --- | --- |
| 98 | 3.4 | **Support** | 17d | 2017-07-10 | 2017-08-01 |  | 217d |  |  |  | 272h |
| 99 | 3.4.1 | **Improve member firm engagement in service delivery (SIP)** | 12d | 2017-07-17 | 2017-08-01 |  | 217d |  |  |  | 192h |
| 100 | 3.4.1.1 | Identify immediate opportunities to incorporate skilled and qualified member firm personnel into the service delivery model | 6d | 2017-07-17 | 2017-07-24 |  | 40d | 0d | start no earlier than 2017-07-17 | Andrew Baker; David Bruem | 96h |
| 101 | 3.4.1.2 | Define Roles and responsibilities | 6d | 2017-07-25 | 2017-08-01 | 100 | 40d |  |  | Andrew Baker; David Bruem | 96h |
| 102 | 3.4.2 | **Define KPIs and targets (MF targets)** | 10d | 2017-07-10 | 2017-07-21 |  | 224d |  |  |  | 80h |
| 103 | 3.4.2.1 | Define KPIs and targets (MF targets) | 10d | 2017-07-10 | 2017-07-21 |  | 47d |  | start no earlier than 2017-07-10 | Andrew Baker | 80h |

Notes:
- 100: resources defined, roles and responsibilities need to be defined
